# FFL v0.1

How a schedule from MS Project changed from version to version. A marks actual dates.

## Version 1 (saved 2018-01-17, file FFL v0.4.mpp)

Note of the change: Merge branch '120' of https://github.com/RocketZone/FFLSupport into 120

| ID | WBS | Task | Duration | Start | Finish | Predecessors | Complete | Total float | Constraint |
| --- | --- | --- | --- | --- | --- | --- | --- | --- | --- |
| 1 | 1 | **Project Setup** | 29d | 2018-01-02 | 2018-02-09 |  | 86% |  |  |
| 2 |  | Gain Access to FLL Server | 1d? | 2017-12-11 A | 2017-12-11 A |  | 100% |  | start no earlier than 2017-12-11 |
| 3 |  | Order DreamWeaver | 1d? | 2017-12-12 A | 2017-12-12 A |  | 100% |  | start no earlier than 2017-12-12 |
| 4 |  | Define Project scope with Eric/Gayann | 5d? | 2017-12-11 A | 2017-12-15 A |  | 100% |  | finish no earlier than 2017-12-15 |
| 5 |  | Develop Project Plan/Timeline with deliverable schedule | 2d? | 2018-01-15 A | 2018-01-16 A |  | 100% |  | finish no earlier than 2018-01-16 |
| 6 |  | Talk to leading developer on project background | 3d? | 2017-12-18 A | 2017-12-20 A |  | 100% |  | finish no earlier than 2017-12-15 |
| 7 |  | Familiarize/locate all data files needed - what's missing? | 5d? | 2017-12-18 A | 2017-12-22 A |  | 100% |  | finish no earlier than 2017-12-22 |
| 8 |  | Scrub Excel FLL content/categories/URLS | 7d? | 2018-01-02 A | 2018-01-10 A |  | 100% |  | finish no earlier than 2018-01-10 |
| 9 | 1.8 | **Create Operating rhythm weekly tag ups** | 1d? | 2018-01-12 | 2018-01-12 |  |  |  |  |
| 10 |  | Send reoccuring weekly tag in to Eric/Gayann | 1d? | 2018-01-17 | 2018-01-17 |  |  | 27d | start no earlier than 2018-01-17 |
| 11 |  | Source 'Manager' Pilot user group | 4d? | 2018-01-16 A | 2018-01-19 |  | 25% | 25d | finish no earlier than 2018-01-19 |
| 12 | 2 | **Design** | 9d? | 2018-01-08 A | 2018-01-18 |  | 29% | 26d |  |
| 13 |  | Define/Consolidate Homepage categories | 2d | 2018-01-08 A | 2018-01-09 A |  | 100% |  | finish no earlier than 2018-01-09 |
| 14 |  | Eric Front Page Buyoff | 1d? | 2018-01-18 | 2018-01-18 |  |  | 26d | start no earlier than 2018-01-18 |
| 15 | 2.3 | **Validate Level-2 page links (all working?)** | 1d? | 2018-01-18 | 2018-01-18 |  |  | 26d |  |
| 16 |  | Validate Content | 1d? | 2018-01-18 | 2018-01-18 |  |  | 26d | start no earlier than 2018-01-18 |
| 17 |  | Validate URL's | 1d? | 2018-01-18 | 2018-01-18 |  |  | 26d | finish no earlier than 2018-01-18 |
| 18 |  | Create Level-2 click design | 1d? | 2018-01-17 | 2018-01-17 |  |  | 27d | start no earlier than 2018-01-17 |
| 19 |  | Duplicate prototype CSS design on 'second-click' template | 1d? | 2018-01-17 | 2018-01-17 |  |  | 27d | finish no earlier than 2018-01-17 |
| 20 | 3 | **Development** | 1d | 2018-01-14 | 2018-01-14 |  |  |  |  |
| 21 |  | SEO - Total Access w/ IT | 5d? | 2018-01-22 | 2018-01-26 |  |  | 20d | finish no earlier than 2018-01-26 |
| 22 |  | Intranet Site-search integration in FLL website | 5d? | 2018-01-24 | 2018-01-30 | 23 |  | 18d | finish no earlier than 2018-01-26 |
| 23 | 3.3 | **Level-1 Dev** | 5d | 2018-01-17 | 2018-01-23 |  |  |  |  |
| 24 |  | Source logos for buttons | 1d? | 2018-01-17 | 2018-01-17 |  |  | 27d | start no earlier than 2018-01-17 |
| 25 |  | Add logos to buttons | 1d? | 2018-01-17 | 2018-01-17 |  |  | 27d | start no earlier than 2018-01-17 |
| 26 |  | Align font sizes on Buttons | 1d? | 2018-01-17 | 2018-01-17 |  |  | 27d | start no earlier than 2018-01-17 |
| 27 |  | Leadership Compass - increase text size on image | 1d? | 2018-01-17 | 2018-01-17 |  |  | 27d | start no earlier than 2018-01-17 |
| 28 |  | Create summary text for each button | 1d? | 2018-01-17 | 2018-01-17 |  |  | 22d |  |
| 29 |  | Remove additional Drop-down menus | 1d? | 2018-01-17 | 2018-01-17 |  |  | 22d |  |
| 30 |  | Add Level-2 Drop-down menu bar items | 1d? | 2018-01-17 | 2018-01-17 |  |  | 22d |  |
| 31 |  | Update Home-page META tags / Title | 1d? | 2018-01-17 | 2018-01-17 |  |  | 22d |  |
| 32 | 3.4 | **Level-2 Dev** | 1d? | 2018-01-18 | 2018-01-18 |  |  |  |  |
| 33 |  | Boeing Production Systems | 1d? | 2018-01-18 | 2018-01-18 |  |  | 26d |  |
| 34 |  | Develop Yourself & Team | 1d? | 2018-01-18 | 2018-01-18 |  |  | 26d |  |
| 35 |  | FOD | 1d? | 2018-01-18 | 2018-01-18 |  |  | 26d |  |
| 36 |  | Saftey | 1d? | 2018-01-18 | 2018-01-18 |  |  | 26d |  |
| 37 |  | Drawings Specs & Procedures | 1d? | 2018-01-19 | 2018-01-19 |  |  | 25d | start no earlier than 2018-01-19 |
| 38 |  | Manage Team & Performance | 1d? | 2018-01-19 | 2018-01-19 |  |  | 25d | start no earlier than 2018-01-19 |
| 39 |  | Project Management & Processes | 1d? | 2018-01-19 | 2018-01-19 |  |  | 25d | start no earlier than 2018-01-19 |
| 40 |  | Tool Management Control & Accountability | 1d? | 2018-01-19 | 2018-01-19 |  |  | 25d | start no earlier than 2018-01-19 |
| 41 | 3.5 | **Pilot / Validation** | 10d? | 2018-01-29 | 2018-02-09 |  |  | 10d |  |
| 42 |  | Pilot User-Group Test (A) | 3d? | 2018-01-29 | 2018-01-31 |  |  | 17d | finish no earlier than 2018-01-31 |
| 43 |  | Incorporate Feedback | 1d? | 2018-01-31 | 2018-01-31 |  |  | 17d | start no earlier than 2018-01-31 |
| 44 |  | Pilot User-Group Test (B) | 5d? | 2018-02-01 | 2018-02-07 |  |  | 12d | finish no earlier than 2018-02-07 |
| 45 |  | Incorporate Feedback | 3d? | 2018-02-07 | 2018-02-09 |  |  | 10d | finish no earlier than 2018-02-09 |
| 46 | 4 | **Go-Live** | 1d? | 2018-02-09 | 2018-02-09 |  |  | 10d |  |
| 47 |  | Upload new FFL site to 'staging' | 1d? | 2018-02-09 | 2018-02-09 |  |  | 10d | start no earlier than 2018-02-09 |
| 48 |  | Upload to Live-site / CUT-OVER | 1d? | 2018-02-09 | 2018-02-09 |  |  | 10d | start no earlier than 2018-02-09 |
| 49 | 5 | **Post- Live Website** | 10d? | 2018-02-12 A | 2018-02-23 |  | 7% | 0d |  |
| 50 |  | Create OneNote Maintenance document | 5d? | 2018-02-12 | 2018-02-16 |  |  | 5d | finish no earlier than 2018-02-16 |
| 51 |  | Create Regulatory audit calendar | 1d? | 2018-02-19 | 2018-02-19 |  |  | 4d | start no earlier than 2018-02-19 |
| 52 |  | Validate Future web-site administration logistics | 1d? | 2018-02-22 A | 2018-02-22 A |  | 100% |  | start no earlier than 2018-01-12 |
| 53 |  | Tip Sheet for Editing | 4d? | 2018-02-20 | 2018-02-23 |  |  | 0d | finish no earlier than 2018-02-23 |
| 54 | 5.5 | **Mobile** | 3d? | 2018-02-21 | 2018-02-23 |  |  | 0d |  |
| 55 |  | Tip Sheet for accessability through mobile devices | 3d? | 2018-02-21 | 2018-02-23 |  |  | 0d | finish no earlier than 2018-02-23 |

## Version 2 (saved 2018-01-18, file FFL v0.5.mpp)

Note of the change: PPlan updates - 01_24 in London

Last finish stays 2018-02-23.

Added:

| ID | Task | Duration | Start | Finish | Predecessors |
| --- | --- | --- | --- | --- | --- |
| 15 | Incorporate Eric Feedback | 1d | 2018-01-18 | 2018-01-18 | 14 |
| 33 | Mobile: create mobile design | 1d? | 2018-01-17 | 2018-01-17 |  |
| 43 | Mobile: Create mobile design | 1d? | 2018-01-18 | 2018-01-18 |  |

Changed:

| ID | Task | Start | Finish | Duration | Total float | Predecessors | Other |
| --- | --- | --- | --- | --- | --- | --- | --- |
| 2 | Gain Access to FLL Server |  |  | 1d? → 1d |  |  |  |
| 3 | Order DreamWeaver |  |  | 1d? → 1d |  |  |  |
| 4 | Define Project scope with Eric/Gayann |  |  | 5d? → 5d |  |  |  |
| 5 | Develop Project Plan/Timeline with deliverable schedule |  |  | 2d? → 2d |  |  |  |
| 6 | Talk to leading developer on project background |  |  | 3d? → 3d |  |  |  |
| 7 | Familiarize/locate all data files needed - what's missing? |  |  | 5d? → 5d |  |  |  |
| 8 | Scrub Excel FLL content/categories/URLS |  |  | 7d? → 7d |  |  |  |
| 10 | Send reoccuring weekly tag in to Eric/Gayann |  |  | 1d? → 1d |  |  |  |
| 11 | Source 'Manager' Pilot user group |  |  | 4d? → 4d |  |  |  |
| 12 | **Design** |  |  | 9d? → 9d |  |  |  |
| 14 | Eric Front Page Buyoff |  |  | 1d? → 0d |  |  |  |
| 16 | **Validate Level-2 page links (all working?)** |  |  | 1d? → 1d |  |  |  |
| 17 | Validate Content |  |  | 1d? → 1d |  |  |  |
| 18 | Validate URL's |  |  | 1d? → 1d |  |  |  |
| 19 | Create Level-2 Design |  |  | 1d? → 1d | 27d → 26d |  | was named Create Level-2 click design |
| 20 | Duplicate prototype CSS design on 'second-click' template | 2018-01-17 → 2018-01-18 (+1d) | 2018-01-17 → 2018-01-18 (+1d) | 1d? → 1d | 27d → 26d | none → 19 |  |
| 22 | SEO - Total Access w/ IT |  |  | 5d? → 5d |  |  |  |
| 23 | Intranet Site-search integration in FLL website |  |  | 5d? → 5d |  |  |  |
| 25 | Source logos for buttons |  |  | 1d? → 1d |  |  |  |
| 26 | Add logos to buttons |  |  | 1d? → 1d |  |  |  |
| 27 | Align font sizes on Buttons |  |  | 1d? → 1d |  |  |  |
| 28 | Leadership Compass - increase text size on image |  |  | 1d? → 1d |  |  |  |
| 29 | Create summary text for each button |  |  | 1d? → 1d |  |  |  |
| 30 | Remove additional Drop-down menus |  |  | 1d? → 1d |  |  |  |
| 31 | Add Level-2 Drop-down menu bar items |  |  | 1d? → 1d |  |  |  |
| 32 | Update Home-page META tags / Title |  |  | 1d? → 1d |  |  |  |
| 35 | Boeing Production Systems |  |  | 1d? → 1d | 26d → 23d |  |  |
| 36 | Develop Yourself & Team | 2018-01-18 → 2018-01-19 (+1d) | 2018-01-18 → 2018-01-19 (+1d) | 1d? → 1d | 26d → 23d | none → 35 |  |
| 37 | FOD | 2018-01-18 → 2018-01-22 (+4d) | 2018-01-18 → 2018-01-22 (+4d) | 1d? → 1d | 26d → 23d | none → 36 |  |
| 38 | Saftey | 2018-01-18 → 2018-01-23 (+5d) | 2018-01-18 → 2018-01-23 (+5d) | 1d? → 1d | 26d → 23d | none → 37 |  |
| 39 | Drawings Specs & Procedures |  |  | 1d? → 1d |  |  |  |
| 40 | Manage Team & Performance |  |  | 1d? → 1d |  |  |  |
| 41 | Project Management & Processes |  |  | 1d? → 1d |  |  |  |
| 42 | Tool Management Control & Accountability |  |  | 1d? → 1d |  |  |  |

## Version 3 (saved 2018-01-23, file FFL v0.6.mpp)

Note of the change: PPlan updates - 01_24 in London

Last finish stays 2018-02-23. Complete tasks 9 → 41.

Added:

| ID | Task | Duration | Start | Finish | Predecessors | Constraint |
| --- | --- | --- | --- | --- | --- | --- |
| 24 | Web-analytics Platform integration | 10d | 2018-01-29 08:00 | 2018-02-09 17:00 |  | finish no earlier than 2018-02-09 17:00 |
| 35 | Button Rework: Round-1 | 2d | 2018-01-19 08:00 A | 2018-01-22 17:00 A |  | finish no earlier than 2018-01-22 17:00 |
| 36 | Button Rework: Round-2 | 2d | 2018-01-25 08:00 | 2018-01-26 17:00 |  | finish no earlier than 2018-01-26 17:00 |
| 40 | Develop Your Team | 0.5d | 2018-01-19 13:00 A | 2018-01-19 17:00 A | 39 |  |
| 47 | Quality | 0.5d | 2018-01-25 08:00 A | 2018-01-25 12:00 A | 46 |  |
| 48 | Run the Business | 0.5d | 2018-01-25 13:00 A | 2018-01-25 17:00 A | 47 |  |
| 49 | Resources | 0.5d | 2018-01-26 08:00 A | 2018-01-26 12:00 A | 48 |  |
| 51 | **Upload / Insert Page Content** | 7.25d | 2018-01-18 08:00 A | 2018-01-29 10:00 |  |  |
| 52 | Boeing Production Systems | 0.25d | 2018-01-19 13:00 A | 2018-01-19 15:00 A | 39 |  |
| 53 | Develop Yourself | 0.25d | 2018-01-22 08:00 A | 2018-01-22 10:00 A | 40 |  |
| 54 | Develop Your Team | 0.25d | 2018-01-22 13:00 A | 2018-01-22 15:00 A | 41 |  |
| 55 | FOD | 0.25d | 2018-01-23 08:00 | 2018-01-23 10:00 | 42 |  |
| 56 | Go4Zero | 0.25d | 2018-01-23 13:00 | 2018-01-23 15:00 | 43 |  |
| 57 | Drawings Specs & Procedures | 0.25d | 2018-01-24 08:00 | 2018-01-24 10:00 | 44 |  |
| 58 | Manage Team Performance | 0.25d | 2018-01-24 13:00 | 2018-01-24 15:00 | 45 |  |
| 59 | Project Management & Processes | 0.25d | 2018-01-25 08:00 | 2018-01-25 10:00 | 46 |  |
| 60 | Tool Management Control & Accountability | 0.25d | 2018-01-25 13:00 | 2018-01-25 15:00 | 47 |  |
| 61 | Quality | 0.25d | 2018-01-26 08:00 | 2018-01-26 10:00 | 48 |  |
| 62 | Run the Business | 0.25d | 2018-01-26 13:00 | 2018-01-26 15:00 | 49 |  |
| 63 | Resources | 0.25d | 2018-01-29 08:00 | 2018-01-29 10:00 | 50 |  |
| 64 | Mobile: Create mobile design | 0.25d | 2018-01-18 08:00 A | 2018-01-18 10:00 A |  |  |

Changed:

| ID | Task | Start | Finish | Duration | Complete | Total float | Predecessors | Other |
| --- | --- | --- | --- | --- | --- | --- | --- | --- |
| 1 | **Project Setup** | 2018-01-02 → 2018-01-02 08:00 | 2018-02-09 → 2018-02-09 17:00 |  | 86% → 90% |  |  |  |
| 2 | Gain Access to FLL Server | 2017-12-11 A → 2017-12-11 08:00 A | 2017-12-11 A → 2017-12-11 17:00 A |  |  |  |  | constraint start no earlier than 2017-12-11 → start no earlier than 2017-12-11 08:00 |
| 3 | Order DreamWeaver | 2017-12-12 A → 2017-12-12 08:00 A | 2017-12-12 A → 2017-12-12 17:00 A |  |  |  |  | constraint start no earlier than 2017-12-12 → start no earlier than 2017-12-12 08:00 |
| 4 | Define Project scope with Eric/Gayann | 2017-12-11 A → 2017-12-11 08:00 A | 2017-12-15 A → 2017-12-15 17:00 A |  |  |  |  | constraint finish no earlier than 2017-12-15 → finish no earlier than 2017-12-15 17:00 |
| 5 | Develop Project Plan/Timeline with deliverable schedule | 2018-01-15 A → 2018-01-15 08:00 A | 2018-01-16 A → 2018-01-16 17:00 A |  |  |  |  | constraint finish no earlier than 2018-01-16 → finish no earlier than 2018-01-16 17:00 |
| 6 | Talk to leading developer on project background | 2017-12-18 A → 2017-12-18 08:00 A | 2017-12-20 A → 2017-12-20 17:00 A |  |  |  |  | constraint finish no earlier than 2017-12-15 → finish no earlier than 2017-12-15 17:00 |
| 7 | Familiarize/locate all data files needed - what's missing? | 2017-12-18 A → 2017-12-18 08:00 A | 2017-12-22 A → 2017-12-22 17:00 A |  |  |  |  | constraint finish no earlier than 2017-12-22 → finish no earlier than 2017-12-22 17:00 |
| 8 | Scrub Excel FLL content/categories/URLS | 2018-01-02 A → 2018-01-02 08:00 A | 2018-01-10 A → 2018-01-10 17:00 A |  |  |  |  | constraint finish no earlier than 2018-01-10 → finish no earlier than 2018-01-10 17:00 |
| 9 | **Create Operating rhythm weekly meetings** | 2018-01-12 → 2018-01-12 08:00 | 2018-01-12 → 2018-01-12 17:00 |  | 0% → 100% |  |  | was named Create Operating rhythm weekly tag ups |
| 10 | Send reoccuring weekly tag in to Eric/Gayann | 2018-01-17 → 2018-01-17 08:00 A | 2018-01-17 → 2018-01-17 17:00 A |  | 0% → 100% | 27d → none |  | constraint start no earlier than 2018-01-17 → start no earlier than 2018-01-17 08:00 |
| 11 | Source 'Manager' Pilot user group | 2018-01-16 A → 2018-01-16 08:00 A | 2018-01-19 → 2018-01-19 17:00 |  |  |  |  | constraint finish no earlier than 2018-01-19 → finish no earlier than 2018-01-19 17:00 |
| 12 | **Design** | 2018-01-08 A → 2018-01-08 08:00 A | 2018-01-18 → 2018-01-26 17:00 (+8d) | 9d → 15d | 29% → 26% | 26d → 20d |  |  |
| 13 | Define/Consolidate Homepage categories | 2018-01-08 A → 2018-01-08 08:00 A | 2018-01-09 A → 2018-01-09 17:00 A |  |  |  |  | constraint finish no earlier than 2018-01-09 → finish no earlier than 2018-01-09 17:00 |
| 14 | Eric Front Page Buyoff | 2018-01-18 → 2018-01-18 08:00 A | 2018-01-18 → 2018-01-18 08:00 A |  | 0% → 100% | 26d → none |  | constraint start no earlier than 2018-01-18 → start no earlier than 2018-01-18 08:00 |
| 15 | Incorporate Eric Feedback | 2018-01-18 → 2018-01-18 08:00 A | 2018-01-18 → 2018-01-18 17:00 A |  | 0% → 100% | 26d → none |  |  |
| 16 | **Validate Level-2 page links (all working?)** | 2018-01-18 → 2018-01-18 08:00 | 2018-01-18 → 2018-01-26 17:00 (+8d) | 1d → 7d |  | 26d → 20d |  |  |
| 17 | Validate Content | 2018-01-18 → 2018-01-18 08:00 | 2018-01-18 → 2018-01-26 17:00 (+8d) | 1d → 7d |  | 26d → 20d |  | constraint start no earlier than 2018-01-18 → finish no earlier than 2018-01-26 17:00 |
| 18 | Validate URL's | 2018-01-18 → 2018-01-18 08:00 | 2018-01-18 → 2018-01-26 17:00 (+8d) | 1d → 7d |  | 26d → 20d |  | constraint finish no earlier than 2018-01-18 → finish no earlier than 2018-01-26 17:00 |
| 19 | Create Level-2 Design | 2018-01-17 → 2018-01-17 08:00 A | 2018-01-17 → 2018-01-17 17:00 A |  | 0% → 100% | 26d → none |  | constraint start no earlier than 2018-01-17 → start no earlier than 2018-01-17 08:00 |
| 20 | Duplicate prototype CSS design on 'second-click' template | 2018-01-18 → 2018-01-18 08:00 A | 2018-01-18 → 2018-01-18 17:00 A |  | 0% → 100% | 26d → none |  | constraint finish no earlier than 2018-01-17 → finish no earlier than 2018-01-17 17:00 |
| 21 | **Development** | 2018-01-14 → 2018-01-14 08:00 | 2018-01-14 → 2018-01-14 17:00 |  | 0% → 60% |  |  |  |
| 22 | SEO - Total Access w/ IT | 2018-01-22 → 2018-01-22 08:00 | 2018-01-26 → 2018-01-26 17:00 |  |  |  |  | constraint finish no earlier than 2018-01-26 → finish no earlier than 2018-01-26 17:00 |
| 23 | Intranet Site-search integration in FLL website | 2018-01-24 → 2018-01-24 08:00 | 2018-01-30 → 2018-01-30 17:00 |  |  |  |  | constraint finish no earlier than 2018-01-26 → finish no earlier than 2018-01-26 17:00 |
| 25 | **Level-1 Dev** | 2018-01-17 → 2018-01-17 08:00 A | 2018-01-23 → 2018-01-23 17:00 |  | 0% → 96% |  |  |  |
| 26 | Source logos for buttons | 2018-01-17 → 2018-01-17 08:00 A | 2018-01-17 → 2018-01-23 17:00 A (+6d) | 1d → 5d | 0% → 100% | 27d → none |  | constraint start no earlier than 2018-01-17 → start no earlier than 2018-01-17 08:00 |
| 27 | Add logos to buttons | 2018-01-17 → 2018-01-17 08:00 A | 2018-01-17 → 2018-01-23 17:00 A (+6d) | 1d → 5d | 0% → 100% | 27d → none |  | constraint start no earlier than 2018-01-17 → start no earlier than 2018-01-17 08:00 |
| 28 | Align font sizes on Buttons | 2018-01-17 → 2018-01-17 08:00 A | 2018-01-17 → 2018-01-23 17:00 A (+6d) | 1d → 5d | 0% → 100% | 27d → none |  | constraint start no earlier than 2018-01-17 → start no earlier than 2018-01-17 08:00 |
| 29 | Leadership Compass - increase text size on image | 2018-01-17 → 2018-01-17 08:00 A | 2018-01-17 → 2018-01-23 17:00 A (+6d) | 1d → 5d | 0% → 100% | 27d → none |  | constraint start no earlier than 2018-01-17 → start no earlier than 2018-01-17 08:00 |
| 30 | Create summary text for each button | 2018-01-17 → 2018-01-17 08:00 A | 2018-01-17 → 2018-01-23 17:00 A (+6d) | 1d → 5d | 0% → 100% | 22d → none |  |  |
| 31 | Remove additional Drop-down menus | 2018-01-17 → 2018-01-17 08:00 A | 2018-01-17 → 2018-01-23 17:00 A (+6d) | 1d → 5d | 0% → 100% | 22d → none |  |  |
| 32 | Add Level-2 Drop-down menu bar items | 2018-01-17 → 2018-01-17 08:00 A | 2018-01-17 → 2018-01-23 17:00 A (+6d) | 1d → 5d | 0% → 100% | 22d → none |  |  |
| 33 | Update Home-page META tags / Title | 2018-01-17 → 2018-01-17 08:00 A | 2018-01-17 → 2018-01-23 17:00 A (+6d) | 1d → 5d | 0% → 100% | 22d → none |  |  |
| 34 | Mobile: validate mobile design | 2018-01-17 → 2018-01-17 08:00 A | 2018-01-17 → 2018-01-17 17:00 A |  | 0% → 100% | 22d → none |  | was named Mobile: create mobile design |
| 37 | **Level-2 Dev** | 2018-01-18 → 2018-01-18 08:00 A | 2018-01-18 → 2018-01-18 17:00 |  | 0% → 78% |  |  |  |
| 38 | Boeing Production Systems | 2018-01-18 → 2018-01-18 08:00 A | 2018-01-18 → 2018-01-18 17:00 A |  | 0% → 100% | 23d → none |  |  |
| 39 | Develop Yourself | 2018-01-19 → 2018-01-19 08:00 A | 2018-01-19 → 2018-01-19 12:00 A | 1d → 0.5d | 0% → 100% | 23d → none |  | was named Develop Yourself & Team |
| 41 | FOD | 2018-01-22 → 2018-01-22 08:00 A | 2018-01-22 → 2018-01-22 12:00 A | 1d → 0.5d | 0% → 100% | 23d → none | 39 → 40 |  |
| 42 | Go4Zero | 2018-01-23 → 2018-01-22 13:00 A (-1d) | 2018-01-23 → 2018-01-22 17:00 A (-1d) | 1d → 0.5d | 0% → 100% | 23d → none |  | was named Saftey |
| 43 | Drawings Specs & Procedures | 2018-01-19 → 2018-01-23 08:00 A (+4d) | 2018-01-19 → 2018-01-23 12:00 A (+4d) | 1d → 0.5d | 0% → 100% | 25d → none | none → 42 | constraint start no earlier than 2018-01-19 → start no earlier than 2018-01-19 08:00 |
| 44 | Manage Team Performance | 2018-01-19 → 2018-01-23 13:00 A (+4d) | 2018-01-19 → 2018-01-23 17:00 A (+4d) | 1d → 0.5d | 0% → 100% | 25d → none | none → 43 | was named Manage Team & Performance; constraint start no earlier than 2018-01-19 → start no earlier than 2018-01-19 08:00 |
| 45 | Project Management & Processes | 2018-01-19 → 2018-01-24 08:00 A (+5d) | 2018-01-19 → 2018-01-24 12:00 A (+5d) | 1d → 0.5d | 0% → 100% | 25d → none | none → 44 | constraint start no earlier than 2018-01-19 → start no earlier than 2018-01-19 08:00 |
| 46 | Tool Management Control & Accountability | 2018-01-19 → 2018-01-24 13:00 A (+5d) | 2018-01-19 → 2018-01-24 17:00 A (+5d) | 1d → 0.5d | 0% → 100% | 25d → none | none → 45 | constraint start no earlier than 2018-01-19 → start no earlier than 2018-01-19 08:00 |
| 50 | Mobile: Create mobile design | 2018-01-18 → 2018-01-26 13:00 A (+8d) | 2018-01-18 → 2018-01-26 17:00 A (+8d) | 1d? → 0.5d | 0% → 100% | 26d → none | none → 49 |  |
| 65 | **Pilot / Validation** | 2018-01-29 → 2018-01-29 08:00 | 2018-02-09 → 2018-02-09 17:00 | 10d? → 10d |  |  |  |  |
| 66 | Pilot User-Group Test (A) | 2018-01-29 → 2018-01-29 08:00 | 2018-01-31 → 2018-01-31 17:00 | 3d? → 3d |  | 17d → 10d |  | constraint finish no earlier than 2018-01-31 → finish no earlier than 2018-01-31 17:00 |
| 67 | Incorporate Feedback | 2018-01-31 → 2018-02-01 08:00 (+1d) | 2018-01-31 → 2018-02-02 17:00 (+2d) | 1d? → 2d |  | 17d → 10d | none → 66 | constraint start no earlier than 2018-01-31 → start no earlier than 2018-01-31 08:00 |
| 68 | Pilot User-Group Test (B) | 2018-02-01 → 2018-02-05 08:00 (+4d) | 2018-02-07 → 2018-02-07 17:00 | 5d? → 3d |  | 12d → 10d | none → 67 | constraint finish no earlier than 2018-02-07 → finish no earlier than 2018-02-07 17:00 |
| 69 | Incorporate Feedback | 2018-02-07 → 2018-02-08 08:00 (+1d) | 2018-02-09 → 2018-02-09 17:00 | 3d? → 2d |  |  | none → 68 | constraint finish no earlier than 2018-02-09 → finish no earlier than 2018-02-09 17:00 |
| 70 | **Go-Live** | 2018-02-09 → 2018-02-09 08:00 | 2018-02-09 → 2018-02-12 17:00 (+3d) | 1d? → 2d? |  | 10d → 9d |  |  |
| 71 | Upload new FFL site to 'staging' | 2018-02-09 → 2018-02-09 08:00 | 2018-02-09 → 2018-02-09 17:00 |  |  |  |  | constraint start no earlier than 2018-02-09 → start no earlier than 2018-02-09 08:00 |
| 72 | Upload to Live-site / CUT-OVER | 2018-02-09 → 2018-02-12 08:00 (+3d) | 2018-02-09 → 2018-02-12 17:00 (+3d) |  |  | 10d → 9d | none → 71 | constraint start no earlier than 2018-02-09 → start no earlier than 2018-02-09 08:00 |
| 73 | **Post- Live Website** | 2018-02-12 A → 2018-02-12 08:00 A | 2018-02-23 → 2018-02-23 17:00 |  |  |  |  |  |
| 74 | Create OneNote Maintenance document | 2018-02-12 → 2018-02-12 08:00 | 2018-02-16 → 2018-02-16 17:00 | 5d? → 5d |  |  |  | constraint finish no earlier than 2018-02-16 → finish no earlier than 2018-02-16 17:00 |
| 75 | Create Regulatory audit calendar | 2018-02-19 → 2018-02-19 08:00 | 2018-02-19 → 2018-02-19 17:00 | 1d? → 1d |  |  |  | constraint start no earlier than 2018-02-19 → start no earlier than 2018-02-19 08:00 |
| 76 | Validate Future web-site administration logistics | 2018-02-22 A → 2018-02-22 08:00 A | 2018-02-22 A → 2018-02-22 17:00 A | 1d? → 1d |  |  |  | constraint start no earlier than 2018-01-12 → start no earlier than 2018-01-12 08:00 |
| 77 | Tip Sheet for Editing | 2018-02-20 → 2018-02-20 08:00 | 2018-02-23 → 2018-02-23 17:00 |  |  |  |  | constraint finish no earlier than 2018-02-23 → finish no earlier than 2018-02-23 17:00 |
| 78 | **Mobile** | 2018-02-21 → 2018-02-21 08:00 | 2018-02-23 → 2018-02-23 17:00 | 3d? → 3d |  |  |  |  |
| 79 | Tip Sheet for accessability through mobile devices | 2018-02-21 → 2018-02-21 08:00 | 2018-02-23 → 2018-02-23 17:00 | 3d? → 3d |  |  |  | constraint finish no earlier than 2018-02-23 → finish no earlier than 2018-02-23 17:00 |
